# CBP_P3B

Schedule from MS Project, 2010-01-04 to 2012-02-27, status date 2011-01-01, costs in $, A marks actual dates.
Home

## Calendars

- Standard: Mon-Fri 08:00-12:00, 13:00-17:00; Sat-Sun off. Exceptions (off unless hours are given): 2010-05-31, 2010-07-04 to 2010-07-05, 2010-09-06, 2010-11-25, 2010-12-24 to 2010-12-27, 2011-01-01, 2011-01-03, 2011-05-30, 2011-07-04, 2011-09-05, 2011-11-24, 2011-12-25 to 2011-12-27, 2012-01-01 to 2012-01-02.

## Resources

| Resource | Rate |
| --- | --- |
| Design | 100 |
| Development | 70 |
| Decumentation | 60 |
| Assembly/test | 70 |
| Purchasing | 40 |
| Xdevelopment | 120 |

## Schedule

| ID | WBS | Task | Duration | Start | Finish | Predecessors | Complete | Remaining | Baseline start | Baseline finish | Baseline duration | Total slack | Free slack | Resources | Work | Actual work | Cost | Baseline cost | Actual cost |
| --- | --- | --- | --- | --- | --- | --- | --- | --- | --- | --- | --- | --- | --- | --- | --- | --- | --- | --- | --- |
| 1 | 1 | **Conveyor Belt Project** | 547d | 2010-01-04 A | 2012-02-27 |  | 61% | 215.5d | 2010-01-04 | 2012-02-02 | 530d | 0d |  |  | 14488h | 9152h | 1,089,520 | 1,051,200 | 721,200 |
| 2 | 1.1 | **Hardware** | 457d | 2010-02-08 A | 2011-11-22 |  | 69% | 143.27d | 2010-02-08 | 2011-10-28 | 440d | 5d |  |  | 3992h | 2768h | 309,440 | 326,400 | 224,960 |
| 3 | 1.1.1 | Hardware specifications | 45d | 2010-02-08 A | 2010-04-09 A | 24 | 100% |  | 2010-02-08 | 2010-04-16 | 50d |  |  | Development; Design | 720h | 720h | 61,200 | 68,000 | 61,200 |
| 4 | 1.1.2 | Hardware design | 67d | 2010-04-12 A | 2010-07-15 A | 3 | 100% |  | 2010-04-19 | 2010-07-27 | 70d |  |  | Design; Development | 1072h | 1072h | 91,120 | 95,200 | 91,120 |
| 5 | 1.1.3 | Hardware documentation | 27d | 2010-07-16 A | 2010-08-23 A | 4 | 100% |  | 2010-07-28 | 2010-09-08 | 30d |  |  | Decumentation; Design | 432h | 432h | 34,560 | 38,400 | 34,560 |
| 6 | 1.1.4 | Prototypes | 78d | 2010-11-03 A | 2011-03-03 | 25 | 44% | 44d | 2010-11-18 | 2011-03-15 | 80d | 75d |  | Assembly/test; Development | 1248h | 544h | 87,360 | 89,600 | 38,080 |
| 7 | 1.1.5 | Order circuit boards | 5d | 2011-07-26 | 2011-08-01 | 26 |  |  | 2011-06-30 | 2011-07-07 | 5d | 5d | 0d | Purchasing | 40h |  | 1,600 | 1,600 |  |
| 8 | 1.1.6 | Assemble preproduction models | 30d | 2011-10-12 | 2011-11-22 | 7FS+50d |  |  | 2011-09-19 | 2011-10-28 | 30d | 5d |  | Assembly/test; Development | 480h |  | 33,600 | 33,600 |  |
| 9 | 1.2 | **Operating system** | 462d | 2010-02-08 A | 2011-11-30 |  | 58% | 192.73d | 2010-02-08 | 2011-11-04 | 445d | 0d |  |  | 5088h | 3416h | 366,160 | 333,600 | 249,120 |
| 10 | 1.2.1 | Kernel specifications | 25d | 2010-02-08 A | 2010-03-12 A | 24 | 100% |  | 2010-02-08 | 2010-03-05 | 20d |  |  | Design | 200h | 200h | 20,000 | 16,000 | 20,000 |
| 11 | 1.2.2 | **Drivers** | 322d | 2010-03-15 A | 2011-06-17 |  | 55% | 145.7d | 2010-03-08 | 2011-05-24 | 310d | 0d |  |  | 2984h | 2032h | 208,880 | 184,800 | 142,240 |
| 12 | 1.2.2.1 | Disk drivers | 110d | 2010-03-15 A | 2010-08-17 A | 10 | 100% |  | 2010-03-08 | 2010-07-27 | 100d |  |  | Assembly/test; Development | 1760h | 1760h | 123,200 | 112,000 | 123,200 |
| 13 | 1.2.2.2 | Serial I/O drivers | 153d | 2010-11-03 A | 2011-06-17 | 25 | 22% | 119d | 2010-11-18 | 2011-05-24 | 130d | 0d |  | Development | 1224h | 272h | 85,680 | 72,800 | 19,040 |
| 14 | 1.2.3 | Memory management | 98d | 2010-03-15 A | 2010-07-30 A | 10 | 100% |  | 2010-03-08 | 2010-07-13 | 90d |  |  | Development | 784h | 784h | 54,880 | 50,400 | 54,880 |
| 15 | 1.2.4 | Operating system documentation | 25d | 2010-04-05 A | 2010-05-07 A | 10 | 100% |  | 2010-03-29 | 2010-04-30 | 25d |  |  | Design; Decumentation | 400h | 400h | 32,000 | 32,000 | 32,000 |
| 16 | 1.2.5 | Network interface | 90d | 2011-07-26 | 2011-11-30 | 26 |  |  | 2011-06-30 | 2011-11-04 | 90d | 0d |  | Development | 720h |  | 50,400 | 50,400 |  |
| 17 | 1.3 | **Utilities** | 412d | 2010-03-08 A | 2011-10-18 |  | 77% | 95.81d | 2010-03-08 | 2011-09-23 | 395d | 30d |  |  | 2368h | 1888h | 199,120 | 182,000 | 165,520 |
| 18 | 1.3.1 | Utilities specifications | 16d | 2010-03-08 A | 2010-03-29 A | 24 | 100% |  | 2010-03-08 | 2010-03-26 | 15d |  |  | Development; Design | 256h | 256h | 21,760 | 20,400 | 21,760 |
| 19 | 1.3.2 | Routine utilities | 65d | 2010-03-30 A | 2010-06-29 A | 18 | 100% |  | 2010-03-29 | 2010-06-21 | 60d |  |  | Xdevelopment | 520h | 520h | 62,400 | 57,600 | 62,400 |
| 20 | 1.3.3 | Complex utilities | 95d | 2010-03-30 A | 2010-08-11 A | 18 | 100% |  | 2010-03-29 | 2010-07-20 | 80d |  |  | Development | 760h | 760h | 53,200 | 44,800 | 53,200 |
| 21 | 1.3.4 | Utilities documentation | 22d | 2010-05-04 A | 2010-06-03 A | 18 | 100% |  | 2010-05-03 | 2010-05-28 | 20d |  |  | Decumentation; Design | 352h | 352h | 28,160 | 25,600 | 28,160 |
| 22 | 1.3.5 | Shell | 60d | 2011-07-26 | 2011-10-18 | 26 |  |  | 2011-06-30 | 2011-09-23 | 60d | 30d |  | Development | 480h |  | 33,600 | 33,600 |  |
| 23 | 1.4 | **System integration** | 547d | 2010-01-04 A | 2012-02-27 |  | 37% | 343.47d | 2010-01-04 | 2012-02-02 | 530d | 0d |  |  | 3040h | 1080h | 214,800 | 209,200 | 81,600 |
| 24 | 1.4.1 | Architectural decisions | 25d | 2010-01-04 A | 2010-02-05 A |  | 100% |  | 2010-01-04 | 2010-02-05 | 25d |  |  | Design | 200h | 200h | 20,000 | 20,000 | 20,000 |
| 25 | 1.4.2 | Integration first phase | 55d | 2010-08-24 A | 2010-11-09 A | 5, 12, 14, 15, 19, 20, 21 | 100% |  | 2010-09-09 | 2010-11-17 | 50d |  |  | Assembly/test; Development | 880h | 880h | 61,600 | 56,000 | 61,600 |
| 26 | 1.4.3 | System hard/software test | 25d | 2011-06-20 | 2011-07-25 | 6, 13 |  |  | 2011-05-25 | 2011-06-29 | 25d | 0d |  | Assembly/test | 200h |  | 14,000 | 14,000 |  |
| 27 | 1.4.4 | Project documentation | 50d | 2011-07-26 | 2011-10-04 | 26 |  |  | 2011-06-30 | 2011-09-09 | 50d | 40d |  | Decumentation; Development | 800h |  | 52,000 | 52,000 |  |
| 28 | 1.4.5 | Integration acceptance testing | 60d | 2011-12-01 | 2012-02-27 | 8, 16, 22, 27 |  |  | 2011-11-07 | 2012-02-02 | 60d | 0d |  | Assembly/test; Development | 960h |  | 67,200 | 67,200 |  |
