# CBP_P3B

Schedule from MS Project, 2010-01-04 to 2012-02-02, costs in $.
Home

## Calendars

- Standard: Mon-Fri 08:00-12:00, 13:00-17:00; Sat-Sun off. Exceptions (off unless hours are given): 2010-05-31, 2010-07-04 to 2010-07-05, 2010-09-06, 2010-11-25, 2010-12-24 to 2010-12-27, 2011-01-01, 2011-01-03, 2011-05-30, 2011-07-04, 2011-09-05, 2011-11-24, 2011-12-25 to 2011-12-27, 2012-01-01 to 2012-01-02.

## Resources

| Resource | Rate |
| --- | --- |
| Design | 100 |
| Development | 70 |
| Decumentation | 60 |
| Assembly/test | 70 |
| Purchasing | 40 |
| Xdevelopment | 120 |

## Schedule

| ID | WBS | Task | Duration | Start | Finish | Predecessors | Total slack | Free slack | Resources | Work | Cost |
| --- | --- | --- | --- | --- | --- | --- | --- | --- | --- | --- | --- |
| 1 | 1 | **Conveyor Belt Project** | 530d | 2010-01-04 | 2012-02-02 |  | 0d |  |  | 13960h | 1,051,200 |
| 2 | 1.1 | **Hardware** | 440d | 2010-02-08 | 2011-10-28 |  | 0d |  |  | 4200h | 326,400 |
| 3 | 1.1.1 | Hardware specifications | 50d | 2010-02-08 | 2010-04-16 | 24 | 0d |  | Development; Design | 800h | 68,000 |
| 4 | 1.1.2 | Hardware design | 70d | 2010-04-19 | 2010-07-27 | 3 | 0d |  | Design; Development | 1120h | 95,200 |
| 5 | 1.1.3 | Hardware documentation | 30d | 2010-07-28 | 2010-09-08 | 4 | 0d |  | Decumentation; Design | 480h | 38,400 |
| 6 | 1.1.4 | Prototypes | 80d | 2010-11-18 | 2011-03-15 | 25 | 50d |  | Assembly/test; Development | 1280h | 89,600 |
| 7 | 1.1.5 | Order circuit boards | 5d | 2011-06-30 | 2011-07-07 | 26 | 5d | 0d | Purchasing | 40h | 1,600 |
| 8 | 1.1.6 | Assemble preproduction models | 30d | 2011-09-19 | 2011-10-28 | 7FS+50d | 5d |  | Assembly/test; Development | 480h | 33,600 |
| 9 | 1.2 | **Operating system** | 445d | 2010-02-08 | 2011-11-04 |  | 0d |  |  | 4640h | 333,600 |
| 10 | 1.2.1 | Kernel specifications | 20d | 2010-02-08 | 2010-03-05 | 24 | 30d | 0d | Design | 160h | 16,000 |
| 11 | 1.2.2 | **Drivers** | 310d | 2010-03-08 | 2011-05-24 |  | 0d |  |  | 2640h | 184,800 |
| 12 | 1.2.2.1 | Disk drivers | 100d | 2010-03-08 | 2010-07-27 | 10 | 30d |  | Assembly/test; Development | 1600h | 112,000 |
| 13 | 1.2.2.2 | Serial I/O drivers | 130d | 2010-11-18 | 2011-05-24 | 25 | 0d |  | Development | 1040h | 72,800 |
| 14 | 1.2.3 | Memory management | 90d | 2010-03-08 | 2010-07-13 | 10 | 40d |  | Development | 720h | 50,400 |
| 15 | 1.2.4 | Operating system documentation | 25d | 2010-03-29 | 2010-04-30 | 10 | 90d |  | Design; Decumentation | 400h | 32,000 |
| 16 | 1.2.5 | Network interface | 90d | 2011-06-30 | 2011-11-04 | 26 | 0d |  | Development | 720h | 50,400 |
| 17 | 1.3 | **Utilities** | 395d | 2010-03-08 | 2011-09-23 |  | 30d |  |  | 2160h | 182,000 |
| 18 | 1.3.1 | Utilities specifications | 15d | 2010-03-08 | 2010-03-26 | 24 | 35d | 0d | Development; Design | 240h | 20,400 |
| 19 | 1.3.2 | Routine utilities | 60d | 2010-03-29 | 2010-06-21 | 18 | 55d |  | Xdevelopment | 480h | 57,600 |
| 20 | 1.3.3 | Complex utilities | 80d | 2010-03-29 | 2010-07-20 | 18 | 35d |  | Development | 640h | 44,800 |
| 21 | 1.3.4 | Utilities documentation | 20d | 2010-05-03 | 2010-05-28 | 18 | 70d |  | Decumentation; Design | 320h | 25,600 |
| 22 | 1.3.5 | Shell | 60d | 2011-06-30 | 2011-09-23 | 26 | 30d |  | Development | 480h | 33,600 |
| 23 | 1.4 | **System integration** | 530d | 2010-01-04 | 2012-02-02 |  | 0d |  |  | 2960h | 209,200 |
| 24 | 1.4.1 | Architectural decisions | 25d | 2010-01-04 | 2010-02-05 |  | 0d |  | Design | 200h | 20,000 |
| 25 | 1.4.2 | Integration first phase | 50d | 2010-09-09 | 2010-11-17 | 5, 12, 14, 15, 19, 20, 21 | 0d |  | Assembly/test; Development | 800h | 56,000 |
| 26 | 1.4.3 | System hard/software test | 25d | 2011-05-25 | 2011-06-29 | 6, 13 | 0d |  | Assembly/test | 200h | 14,000 |
| 27 | 1.4.4 | Project documentation | 50d | 2011-06-30 | 2011-09-09 | 26 | 40d |  | Decumentation; Development | 800h | 52,000 |
| 28 | 1.4.5 | Integration acceptance testing | 60d | 2011-11-07 | 2012-02-02 | 8, 16, 22, 27 | 0d |  | Assembly/test; Development | 960h | 67,200 |
